# 中联泰国园区DCOM平台项目

Schedule from a web Gantt chart, 2025-12-30 to 2025-12-30.
Saturdays and Sundays are off

## Schedule

| ID | WBS | Task | Duration | Start | Finish | Status | inPeople |
| --- | --- | --- | --- | --- | --- | --- | --- |
| 2 | 1 | DCOM系统合同签订 | 1d | 2025-12-30 | 2025-12-30 | waiting |  |
| 3 | 2 | 项目立项启动及启动会议 | 1d | 2025-12-30 | 2025-12-30 | waiting |  |
| 4 | 3 | DCOM系统硬件设备采购 | 1d | 2025-12-30 | 2025-12-30 |  |  |
| 5 | 4 | 硬件设备发货及海运报关 | 1d | 2025-12-30 | 2025-12-30 |  |  |
| 6 | 5 | 园区网络施工及设备安装 | 1d | 2025-12-30 | 2025-12-30 |  |  |
| 7 | 6 | 园区网络及设备调试 | 1d | 2025-12-30 | 2025-12-30 |  |  |
| 8 | 7 | DCOM平台环境部署 | 1d | 2025-12-30 | 2025-12-30 |  |  |
| 9 | 8 | 机房楼系统交付（一期-D1楼） | 1d | 2025-12-30 | 2025-12-30 |  | 周全 |
| 10 | 9 | 机房楼系统交付（二期-D1楼） | 1d | 2025-12-30 | 2025-12-30 |  | 周全 |
| 11 | 10 | 机房楼系统交付（D2楼） | 1d | 2025-12-30 | 2025-12-30 |  |  |
| 12 | 11 | DCOM平台南向数据接入（一期-D1楼） | 1d | 2025-12-30 | 2025-12-30 |  |  |
| 13 | 12 | DCOM平台南向数据接入（二期-D1楼） | 1d | 2025-12-30 | 2025-12-30 |  |  |
| 14 | 13 | DCOM平台数据上线（1#楼） | 1d | 2025-12-30 | 2025-12-30 |  |  |
| 15 | 14 | DCOM平台数据上线（1#楼） | 1d | 2025-12-30 | 2025-12-30 |  |  |
| 16 | 15 | DCOM北向数据上传（1#楼） | 1d | 2025-12-30 | 2025-12-30 |  |  |
| 17 | 16 | DCOM北向数据上传（1#楼） | 1d | 2025-12-30 | 2025-12-30 |  |  |
| 18 | 17 | DCOM平台北向数据验收 | 1d | 2025-12-30 | 2025-12-30 |  |  |
| 19 | 18 | DCOM平台监控功能上线 | 1d | 2025-12-30 | 2025-12-30 |  |  |
| 20 | 19 | DCOM平台访客功能上线 | 1d | 2025-12-30 | 2025-12-30 |  |  |
| 21 | 20 | DCOM平台运维功能开发 | 1d | 2025-12-30 | 2025-12-30 |  |  |
| 22 | 21 | DCOM平台功能阶段性交付 | 1d | 2025-12-30 | 2025-12-30 |  |  |
| 23 | 22 | DCOM平台验收测试 | 1d | 2025-12-30 | 2025-12-30 |  |  |
| 24 | 23 | DCOM平台培训及验收 | 1d | 2025-12-30 | 2025-12-30 |  |  |

Notes:
- 9: 预计2026/03/30
- 10: 预计2026/05/30
- 11: 预计2026/05/30
